# basic_one_task_test

Schedule from MS Project, 2022-04-08 to 2023-06-19, costs in ￥.

## Calendars

- Standard: Mon-Fri 08:00-12:00, 13:00-17:00; Sat-Sun off.

## Resources

| Resource | Rate |
| --- | --- |
| 项目经理 | 125 |
| 编码 | 125 |
| EPG | 125 |
| 质量保证 | 125 |
| 配置管理 | 125 |
| 需求 | 125 |
| 测试 | 125 |
| 设计 | 125 |
| 采购 | 125 |
| 部门经理 | 125 |
| 培训 | 125 |
| 客户代表 | 125 |
| 项目组成员 | 125 |
| 质量保证主管 | 125 |
| 配置管理主管 | 125 |
| 高级编码 | 125 |
| 高级设计 | 125 |
| 高级测试 | 125 |
| 高级项目经理 | 125 |
| 高级需求分析 | 125 |
| 高级架构师 | 125 |
| 架构师 | 125 |

## Schedule

| ID | WBS | Task | Duration | Start | Finish | Predecessors | Total slack | Constraint | Resources | Work | Cost |
| --- | --- | --- | --- | --- | --- | --- | --- | --- | --- | --- | --- |
| 212 | 1 | **项目周例会跟踪风险和度量 15** | 0.5d | 2023-06-19 08:00 | 2023-06-19 12:00 |  | 0d | must start on 2023-06-19 08:00 | 项目组成员 | 4h | 500 |
| 211 | 1.1 | **项目周例会跟踪风险和度量 14** | 0.5d | 2023-06-05 08:00 | 2023-06-05 12:00 |  | 0d | must start on 2023-06-05 08:00 | 项目组成员 | 4h | 500 |
| 210 | 1.1.1 | 项目周例会跟踪风险和度量 13 | 0.5d | 2023-05-22 08:00 | 2023-05-22 12:00 |  | 0d | must start on 2023-05-22 08:00 | 项目组成员 | 4h | 500 |
| 209 | 1.1.2 | 项目周例会跟踪风险和度量 12 | 0.5d | 2022-05-08 08:00 | 2022-05-09 12:00 |  | 0d | must start on 2022-05-08 08:00 | 项目组成员 | 4h | 500 |
| 208 | 1.1.3 | 项目周例会跟踪风险和度量 11 | 0.5d | 2022-09-12 08:00 | 2022-09-12 12:00 |  | 0d | must start on 2022-09-12 08:00 | 项目组成员 | 4h | 500 |
| 207 | 1.1.4 | 项目周例会跟踪风险和度量 10 | 0.5d | 2022-08-29 08:00 | 2022-08-29 12:00 |  | 0d | must start on 2022-08-29 08:00 | 项目组成员 | 4h | 500 |
| 206 | 1.1.5 | 项目周例会跟踪风险和度量 9 | 0.5d | 2022-08-15 08:00 | 2022-08-15 12:00 |  | 0d | must start on 2022-08-15 08:00 | 项目组成员 | 4h | 500 |
| 205 | 1.1.6 | 项目周例会跟踪风险和度量 8 | 0.5d | 2022-08-01 08:00 | 2022-08-01 12:00 |  | 0d | must start on 2022-08-01 08:00 | 项目组成员 | 4h | 500 |
| 204 | 1.1.7 | 项目周例会跟踪风险和度量 7 | 0.5d | 2022-07-18 08:00 | 2022-07-18 12:00 |  | 0d | must start on 2022-07-18 08:00 | 项目组成员 | 4h | 500 |
| 203 | 1.1.8 | 项目周例会跟踪风险和度量 6 | 0.5d | 2022-07-04 08:00 | 2022-07-04 12:00 |  | 0d | must start on 2022-07-04 08:00 | 项目组成员 | 4h | 500 |
| 202 | 1.1.9 | 项目周例会跟踪风险和度量 5 | 0.5d | 2022-06-20 08:00 | 2022-06-20 12:00 |  | 0d | must start on 2022-06-20 08:00 | 项目组成员 | 4h | 500 |
| 201 | 1.1.10 | 项目周例会跟踪风险和度量 4 | 0.5d | 2022-06-06 08:00 | 2022-06-06 12:00 |  | 0d | must start on 2022-06-06 08:00 | 项目组成员 | 4h | 500 |
| 200 | 1.1.11 | 项目周例会跟踪风险和度量 3 | 0.5d | 2022-05-23 08:00 | 2022-05-23 12:00 |  | 0d | must start on 2022-05-23 08:00 | 项目组成员 | 4h | 500 |
| 199 | 1.1.12 | 项目周例会跟踪风险和度量 2 | 0.5d | 2022-05-09 08:00 | 2022-05-09 12:00 |  | 0d | must start on 2022-05-09 08:00 | 项目组成员 | 4h | 500 |
| 198 | 1.1.13 | 项目周例会跟踪风险和度量 1 | 0.5d | 2022-04-25 08:00 | 2022-04-25 12:00 |  | 0d | must start on 2022-04-25 08:00 | 项目组成员 | 4h | 500 |
| 197 | 1.2 | **项目周例会跟踪风险和度量** | 300.5d | 2022-04-25 08:00 | 2023-06-19 12:00 |  | 0d |  |  | 60h | 7,500 |
| 196 | 1.2.1 | 周期性质量保证活动 6 | 0.5d | 2022-09-20 08:00 | 2022-09-20 12:00 |  | 0d | must start on 2022-09-20 08:00 | 质量保证 | 4h | 500 |
| 195 | 1.2.2 | 周期性质量保证活动 5 | 0.5d | 2022-08-10 08:00 | 2022-08-10 12:00 |  | 0d | must start on 2022-08-10 08:00 | 质量保证 | 4h | 500 |
| 194 | 1.2.3 | 周期性质量保证活动 4 | 0.5d | 2022-07-12 08:00 | 2022-07-12 12:00 |  | 0d | must start on 2022-07-12 08:00 | 质量保证 | 4h | 500 |
| 193 | 1.2.4 | 周期性质量保证活动 3 | 0.5d | 2022-06-20 08:00 | 2022-06-20 12:00 |  | 0d | must start on 2022-06-20 08:00 | 质量保证 | 4h | 500 |
| 192 | 1.2.5 | 周期性质量保证活动 2 | 0.5d | 2022-06-22 08:00 | 2022-06-22 12:00 |  | 0d | must start on 2022-06-22 08:00 | 质量保证 | 4h | 500 |
| 191 | 1.2.6 | 周期性质量保证活动 1 | 0.5d | 2022-05-22 08:00 | 2022-05-23 12:00 |  | 0d | must start on 2022-05-22 08:00 | 质量保证 | 4h | 500 |
| 190 | 1.3 | **周期性质量保证活动** | 86.5d | 2022-05-22 08:00 | 2022-09-20 12:00 |  | 0d |  |  | 24h | 3,000 |
| 189 | 1.3.1 | 需求跟踪矩阵的维护-测试 | 0.25d | 2022-09-10 08:00 | 2022-09-12 10:00 |  | 0d | must start on 2022-09-10 08:00 | 测试 | 2h | 250 |
| 188 | 1.3.2 | 需求跟踪矩阵的维护-编码 | 0.25d | 2022-09-08 08:00 | 2022-09-08 10:00 | 106 | 0d | must start on 2022-09-08 08:00 | 编码 | 2h | 250 |
| 187 | 1.3.3 | 需求跟踪矩阵的维护-设计 | 0.31d | 2022-07-27 13:30 | 2022-07-27 16:00 | 67 | 0d | must start on 2022-07-27 13:30 | 设计 | 2.5h | 312.5 |
| 186 | 1.3.4 | 需求跟踪矩阵的维护-需求 | 0.25d | 2022-06-03 13:00 | 2022-06-03 15:00 |  | 0d | must start on 2022-06-03 13:00 | 需求 | 2h | 250 |

| ID | WBS | Task | Duration | Start | Finish | Predecessors | Total slack | Constraint | Resources | Work | Cost |
| --- | --- | --- | --- | --- | --- | --- | --- | --- | --- | --- | --- |
| 185 | 1.4 | **需求管理** | 70.75d | 2022-06-03 13:00 | 2022-09-12 10:00 |  | 0d |  |  | 8.5h | 1,062.5 |
| 184 | 1.4.1 | 配置管理 6 | 0.5d | 2022-09-12 08:00 | 2022-09-12 12:00 |  | 0d | must start on 2022-09-12 08:00 | 配置管理 | 4h | 500 |
| 183 | 1.4.2 | 配置管理 5 | 0.5d | 2022-08-31 08:00 | 2022-08-31 12:00 |  | 0d | must start on 2022-08-31 08:00 | 配置管理 | 4h | 500 |
| 182 | 1.4.3 | 配置管理 4 | 0.5d | 2022-08-20 08:00 | 2022-08-22 12:00 |  | 0d | must start on 2022-08-20 08:00 | 配置管理 | 4h | 500 |
| 181 | 1.4.4 | 配置管理 3 | 0.5d | 2022-08-03 08:00 | 2022-08-03 12:00 |  | 0d | must start on 2022-08-03 08:00 | 配置管理 | 4h | 500 |
| 180 | 1.4.5 | 配置管理 2 | 0.5d | 2022-06-24 08:00 | 2022-06-24 12:00 |  | 0d | must start on 2022-06-24 08:00 | 配置管理 | 4h | 500 |
| 179 | 1.4.6 | 配置管理 1 | 0.5d | 2022-05-22 08:00 | 2022-05-23 12:00 |  | 0d | must start on 2022-05-22 08:00 | 配置管理 | 4h | 500 |
| 178 | 1.4.7 | 搭建配置库 | 0.5d | 2022-04-28 08:00 | 2022-04-28 12:00 |  | 0d | must start on 2022-04-28 08:00 | 配置管理 | 4h | 500 |
| 177 | 1.5 | **配置管理** | 97.5d | 2022-04-28 08:00 | 2022-09-12 12:00 |  | 0d |  |  | 28h | 3,500 |
| 176 | 1.5.1 | EPG将度量数据、优秀案例、经验教训等纳入组织财富库 | 0.5d | 2022-10-24 10:15 | 2022-10-24 15:15 | 175 | 0d | must start on 2022-10-24 10:15 | EPG | 4h | 500 |
| 175 | 1.5.2 | 更新《项目总结报告》 | 0.5d | 2022-10-21 15:15 | 2022-10-24 10:15 | 174 | 0d | must start on 2022-10-21 15:15 | 项目经理 | 4h | 500 |
| 174 | 1.5.3 | 项目总结大会（总结度量、经验以及教训） | 0.06d | 2022-10-21 14:45 | 2022-10-21 15:15 | 173 | 0d | must start on 2022-10-21 14:45 | 编码; 测试; 配置管理; 设计; 项目经理; 需求; 质量保证; EPG | 4h | 500 |
| 173 | 1.5.4 | 编写《项目总结报告》,收集相关经验 | 0.5d | 2022-10-21 09:30 | 2022-10-21 14:30 |  | 0d | must start on 2022-10-21 09:30 | 项目经理 | 4h | 500 |
| 172 | 1.6 | **项目总结** | 1.59d | 2022-10-21 09:30 | 2022-10-24 15:15 | 169 | 0d |  |  | 16h | 2,000 |
| 171 | 1.6.1 | **必要时对相关计划进行相应调整** | 0.5d | 2022-10-20 14:15 | 2022-10-21 09:15 | 170 | 0d | must start on 2022-10-20 14:15 | 项目经理 | 4h | 500 |
| 170 | 1.6.1.1 | 召开验收里程碑评审会议，填写《验收里程碑状态报告》 | 0.25d | 2022-10-20 11:15 | 2022-10-20 14:15 | 168 | 0d | must start on 2022-10-20 11:15 | 项目经理; 质量保证主管; 高级编码; 需求; 测试; 设计 | 12h | 1,500 |
| 169 | 1.6.2 | **验收里程碑** | 0.75d | 2022-10-20 11:15 | 2022-10-21 09:15 |  | 0d |  |  | 16h | 2,000 |
| 168 | 1.6.2.1 | 填写产品基线《发布报告》 | 1d | 2022-10-19 11:00 | 2022-10-20 11:00 | 167 | 0d | must start on 2022-10-19 11:00 | 配置管理 | 8h | 1,000 |
| 167 | 1.6.2.2 | 配置管理在配置库中建立产品基线 | 1d | 2022-10-18 10:45 | 2022-10-19 10:45 | 166 | 0d | must start on 2022-10-18 10:45 | 配置管理 | 8h | 1,000 |
| 166 | 1.6.2.3 | QA和CM对配置库进行功能审计和物理审计 | 0.5d | 2022-10-17 14:45 | 2022-10-18 09:45 | 165 | 0d | must start on 2022-10-17 14:45 | 配置管理; 质量保证 | 8h | 1,000 |
| 165 | 1.6.2.4 | 产品基线建立申请,填写《基线建立申请》 | 1d | 2022-10-14 14:30 | 2022-10-17 14:30 | 163 | 0d | must start on 2022-10-14 14:30 | 配置管理 | 8h | 1,000 |
| 164 | 1.6.3 | **建立产品基线** | 3.69d | 2022-10-14 14:30 | 2022-10-20 11:00 |  | 0d |  |  | 32h | 4,000 |
| 163 | 1.6.3.1 | 编写《验收报告》,客户确认 | 1d | 2022-10-13 14:15 | 2022-10-14 14:15 | 162 | 0d | must start on 2022-10-13 14:15 | 项目经理 | 8h | 1,000 |
| 162 | 1.6.3.2 | 记录验收测试BUG,并进行修正至关闭 | 0.5d | 2022-10-13 09:15 | 2022-10-13 14:15 | 161 | 0d | must start on 2022-10-13 09:15 | 测试; 编码 | 8h | 1,000 |
| 161 | 1.6.3.3 | 执行验收测试 | 5d | 2022-10-06 09:15 | 2022-10-13 09:15 | 160 | 0d | must start on 2022-10-06 09:15 | 测试 | 40h | 5,000 |
| 160 | 1.6.3.4 | 测试人员与客户共同编写《验收测试用例》 | 1d | 2022-10-05 09:15 | 2022-10-06 09:15 | 159 | 0d | must start on 2022-10-05 09:15 | 项目经理 | 8h | 1,000 |
| 159 | 1.6.3.5 | 项目经理向客户提出验收申请，编写《验收计划》 | 1d | 2022-10-04 09:15 | 2022-10-05 09:15 |  | 0d | must start on 2022-10-04 09:15 | 项目经理 | 8h | 1,000 |

| ID | WBS | Task | Duration | Start | Finish | Predecessors | Total slack | Constraint | Resources | Work | Cost |
| --- | --- | --- | --- | --- | --- | --- | --- | --- | --- | --- | --- |
| 158 | 1.6.4 | **验收** | 8.5d | 2022-10-04 09:15 | 2022-10-14 14:15 |  | 0d |  |  | 72h | 9,000 |
| 157 | 1.6.4.1 | 系统安装部署,用户确认 | 0.5d | 2022-10-17 08:00 | 2022-10-17 12:00 | 156 | 0d | must start on 2022-10-17 08:00 | 项目经理; 设计; 测试 | 12h | 1,500 |
| 156 | 1.6.4.2 | 配置管理员根据《产品交接验收单》将产品基线中的配置项放入产品库 | 1d | 2022-10-14 08:00 | 2022-10-14 17:00 | 155 | 0d | must start on 2022-10-14 08:00 | 配置管理 | 8h | 1,000 |
| 155 | 1.6.4.3 | 产品进行打包，编写《产品打包清单》 | 0.5d | 2022-10-13 13:00 | 2022-10-13 17:00 | 154 | 0d | must start on 2022-10-13 13:00 | 项目经理; 需求 | 8h | 1,000 |
| 154 | 1.6.4.4 | QA检查<用户手册>记录不符合项进行修正 | 0.5d | 2022-10-13 08:00 | 2022-10-13 12:00 | 153 | 0d | must start on 2022-10-13 08:00 | 质量保证; 设计 | 8h | 1,000 |
| 153 | 1.6.4.5 | 更新完善<用户手册> | 1d | 2022-10-12 08:00 | 2022-10-12 17:00 | 152 | 0d | must start on 2022-10-12 08:00 | 设计 | 8h | 1,000 |
| 152 | 1.6.4.6 | 更新完善《产品交接验收单》 | 1d | 2022-10-11 08:00 | 2022-10-11 17:00 | 151 | 0d | must start on 2022-10-11 08:00 | 项目经理 | 8h | 1,000 |
| 151 | 1.6.4.7 | 制定《系统上线验收计划》提交客户确认 | 1d | 2022-10-09 08:00 | 2022-10-10 17:00 |  | 0d | must start on 2022-10-09 08:00 | 项目经理 | 8h | 1,000 |
| 150 | 1.6.5 | 试运行 | 5.5d | 2022-10-09 08:00 | 2022-10-17 12:00 |  | 0d |  |  | 60h | 7,500 |
| 149 | 1.7 | **上线及验收 （产品交付）** | 13d | 2022-10-04 09:15 | 2022-10-21 09:15 | 133 | 0d |  |  | 180h | 22,500 |
| 148 | 1.7.1 | **项目经理对项目计划进行阶段性调整** | 2d | 2022-10-19 08:15 | 2022-10-21 08:15 | 147 | 0d | must start on 2022-10-19 08:15 | 项目经理 | 16h | 2,000 |
| 147 | 1.7.1.1 | 召开测试里程碑评审会议,填写《编码里程碑状态报告》 | 0.5d | 2022-10-18 13:15 | 2022-10-19 08:15 | 145 | 0d | must start on 2022-10-18 13:15 | 配置管理主管; 质量保证主管; 测试; 项目经理 | 16h | 2,000 |
| 146 | 1.7.2 | **测试阶段里程碑** | 2.5d | 2022-10-18 13:15 | 2022-10-21 08:15 |  | 0d |  |  | 32h | 4,000 |
| 145 | 1.7.2.1 | 填写测试基线《发布报告》 | 2d | 2022-10-14 13:15 | 2022-10-18 13:15 | 144 | 0d | must start on 2022-10-14 13:15 | 配置管理 | 16h | 2,000 |
| 144 | 1.7.2.2 | 配置管理在配置库中建立测试基线 | 2d | 2022-10-12 13:00 | 2022-10-14 12:00 | 143 | 0d | must start on 2022-10-12 13:00 | 配置管理 | 16h | 2,000 |
| 143 | 1.7.2.3 | QA和CM对配置库进行功能审计和物理审计 | 1d | 2022-10-11 13:00 | 2022-10-12 12:00 | 142 | 0d | must start on 2022-10-11 13:00 | 配置管理; 质量保证 | 16h | 2,000 |
| 142 | 1.7.2.4 | 测试基线建立申请,填写《基线建立申请》 | 1.94d | 2022-10-07 13:30 | 2022-10-11 12:00 | 140 | 0d | must start on 2022-10-07 13:30 | 配置管理 | 15.5h | 1,937.5 |
| 141 | 1.7.3 | **建立测试基线** | 6.97d | 2022-10-07 13:30 | 2022-10-18 13:15 |  | 0d |  |  | 63.5h | 7,937.5 |
| 140 | 1.7.3.1 | 统计分析测试数据编写<系统测试报告> | 2d | 2022-10-05 13:30 | 2022-10-07 13:30 | 139 | 0d | must start on 2022-10-05 13:30 | 测试 | 16h | 2,000 |
| 139 | 1.7.3.2 | 记录测试中发现的BUG并进行修改 | 2d | 2022-10-03 13:00 | 2022-10-05 12:00 | 138 | 0d | must start on 2022-10-03 13:00 | 编码 | 16h | 2,000 |
| 138 | 1.7.3.3 | 执行回归测试 | 4d | 2022-09-27 13:00 | 2022-10-03 12:00 | 137 | 0d | must start on 2022-09-27 13:00 | 测试 | 32h | 4,000 |
| 137 | 1.7.3.4 | 执行系统测试 | 6.5d | 2022-09-17 13:00 | 2022-09-27 12:00 | 136 | 0d | must start on 2022-09-17 13:00 | 测试 | 52h | 6,500 |
| 136 | 1.7.3.5 | 搭建系统测试环境 | 2d | 2022-09-13 13:00 | 2022-09-15 12:00 | 135 | 0d | must start on 2022-09-13 13:00 | 测试 | 16h | 2,000 |
| 135 | 1.7.3.6 | 测试前进行测试用例自评 | 1d | 2022-09-12 13:00 | 2022-09-13 12:00 |  | 0d | must start on 2022-09-12 13:00 | 测试 | 8h | 1,000 |
| 134 | 1.7.4 | 系统测试 | 19.06d | 2022-09-12 13:00 | 2022-10-07 13:30 |  | 0d |  |  | 140h | 17,500 |

| ID | WBS | Task | Type | Duration | Start | Finish | Predecessors | Total slack | Constraint | Resources | Work | Cost |
| --- | --- | --- | --- | --- | --- | --- | --- | --- | --- | --- | --- | --- |
| 133 | 1.8 | **系统测试** |  | 28.53d | 2022-09-12 13:00 | 2022-10-21 08:15 |  | 0d |  |  | 235.5h | 29,437.5 |
| 132 | 1.8.1 | **项目经理对项目计划进行阶段性调整，完善《需求跟踪矩阵》** |  | 1d | 2022-09-29 10:45 | 2022-09-30 10:45 | 131 | 0d | must start on 2022-09-29 10:45 | 项目经理 | 8h | 1,000 |
| 131 | 1.8.1.1 | 召开实现里程碑评审会议,填写《编码里程碑状态报告》 | milestone | 0d | 2022-09-28 15:45 | 2022-09-28 15:45 | 129 | 0d | must start on 2022-09-28 15:45 | 项目经理; 设计; 编码; 测试 |  |  |
| 130 | 1.8.2 | **实现阶段里程碑** |  | 1.5d | 2022-09-28 15:45 | 2022-09-30 10:45 |  | 0d |  |  | 8h | 1,000 |
| 129 | 1.8.2.1 | 填写开发基线《发布报告》 |  | 0.25d | 2022-09-28 13:15 | 2022-09-28 15:15 | 128 | 0d | must start on 2022-09-28 13:15 | 配置管理 | 2h | 250 |
| 128 | 1.8.2.2 | 配置管理在配置库中建立开发基线 |  | 1d | 2022-09-27 13:15 | 2022-09-28 13:15 | 127 | 0d | must start on 2022-09-27 13:15 | 配置管理 | 8h | 1,000 |
| 127 | 1.8.2.3 | QA和CM对配置库进行功能审计和物理审计 |  | 0.5d | 2022-09-27 08:00 | 2022-09-27 12:00 | 126 | 0d | must start on 2022-09-27 08:00 | 质量保证; 配置管理 | 8h | 1,000 |
| 126 | 1.8.2.4 | 开发基线建立申请,填写《基线建立申请》 |  | 1d | 2022-09-26 08:00 | 2022-09-26 17:00 | 124SS | 0d | must start on 2022-09-26 08:00 | 配置管理 | 8h | 1,000 |
| 125 | 1.8.3 | **建立开发基线** |  | 2.78d | 2022-09-26 08:00 | 2022-09-28 15:15 |  | 0d |  |  | 26h | 3,250 |
| 124 | 1.8.3.1 | 编写《产品集成阶段报告》 |  | 0.97d | 2022-09-23 08:00 | 2022-09-23 16:45 | 123 | 0d | must start on 2022-09-23 08:00 | 高级编码 | 7.75h | 968.75 |
| 123 | 1.8.3.2 | 问题修复处理 |  | 0.97d | 2022-09-22 08:15 | 2022-09-22 17:00 | 122 | 0d | must start on 2022-09-22 08:15 | 高级编码 | 7.75h | 968.75 |
| 122 | 1.8.3.3 | 准备完毕进行产品集成，进行集成测试 |  | 1d | 2022-09-21 08:00 | 2022-09-21 17:00 | 121 | 0d | must start on 2022-09-21 08:00 | 高级编码 | 8h | 1,000 |
| 121 | 1.8.3.4 | 进行产品集成,模块集成过程中编写<产品集成模块核查报告> |  | 1d | 2022-09-20 08:00 | 2022-09-20 17:00 | 120 | 0d | must start on 2022-09-20 08:00 | 高级编码 | 8h | 1,000 |
| 120 | 1.8.3.5 | 依据<产品集成检查列表>,<接口列表>进行检查 |  | 1d | 2022-09-19 08:00 | 2022-09-19 17:00 | 119 | 0d | must start on 2022-09-19 08:00 | 高级编码 | 8h | 1,000 |
| 119 | 1.8.3.6 | 搭建集成环境 |  | 1d | 2022-09-15 16:30 | 2022-09-16 16:30 | 117 | 0d | must start on 2022-09-15 16:30 | 高级编码 | 8h | 1,000 |
| 118 | 1.8.4 | **产品集成** |  | 6.03d | 2022-09-15 16:30 | 2022-09-23 16:45 |  | 0d |  |  | 47.5h | 5,937.5 |
| 117 | 1.8.4.1 | 接口进行评审 |  | 0.5d | 2022-09-15 11:30 | 2022-09-15 16:30 | 116 | 0d | must start on 2022-09-15 11:30 | 项目经理; 设计 | 8h | 1,000 |
| 116 | 1.8.4.2 | 完善<接口定义书> |  | 0.38d | 2022-09-15 08:30 | 2022-09-15 11:30 | 115 | 0d | must start on 2022-09-15 08:30 | 项目经理; 设计 | 6h | 750 |
| 115 | 1.8.4.3 | QA检查《单元测试报告》和《单元测试BUG记录》 |  | 0.5d | 2022-09-14 13:15 | 2022-09-15 08:15 | 114 | 0d | must start on 2022-09-14 13:15 | 高级编码; 质量保证 | 8h | 1,000 |
| 114 | 1.8.4.4 | 编写《单元测试报告》 |  | 1d | 2022-09-13 13:15 | 2022-09-14 13:15 | 113 | 0d | must start on 2022-09-13 13:15 | 高级编码 | 8h | 1,000 |
| 113 | 1.8.4.5 | 单元测试执行过程中发现的缺陷记录《单元测试BUG记录》 |  | 1d | 2022-09-12 13:15 | 2022-09-13 13:15 | 112 | 0d | must start on 2022-09-12 13:15 | 高级编码 | 8h | 1,000 |
| 112 | 1.8.4.6 | 依据《单元测试用例》执行单元测试 |  | 5.03d | 2022-09-05 13:00 | 2022-09-12 13:15 | 96 | 0d | must start on 2022-09-05 13:00 | 高级编码 | 40.25h | 5,031.25 |
| 111 | 1.8.5 | **执行单元测试** |  | 8.44d | 2022-09-05 13:00 | 2022-09-15 16:30 |  | 0d |  |  | 78.25h | 9,781.25 |
| 110 | 1.8.5.1 | QA检查＜单元测试用例＞记录不符合项并修正 |  | 1d | 2022-09-12 08:15 | 2022-09-13 08:15 | 109 | 0d | must start on 2022-09-12 08:15 | 高级编码 | 8h | 1,000 |
| 109 | 1.8.5.2 | 评审＜单元测试用例＞，记录缺陷并修正 |  | 1d | 2022-09-09 08:15 | 2022-09-12 08:15 | 107 | 0d | must start on 2022-09-09 08:15 | 高级编码 | 8h | 1,000 |

| ID | WBS | Task | Duration | Start | Finish | Predecessors | Total slack | Constraint | Resources | Work | Cost |
| --- | --- | --- | --- | --- | --- | --- | --- | --- | --- | --- | --- |
| 108 | 1.8.6 | **编写单元测试用例（编码期间完善，日期为截止日期）** | 2d | 2022-09-09 08:15 | 2022-09-13 08:15 |  | 0d |  |  | 16h | 2,000 |
| 107 | 1.8.6.1 | 完善单元测试用例（编码期间完善） | 1d | 2022-09-08 08:00 | 2022-09-08 17:00 |  | 0d | must start on 2022-09-08 08:00 | 高级编码 | 8h | 1,000 |
| 106 | 1.8.6.2 | 核心代码交叉走查（编码期间完善） | 0.5d | 2022-09-07 13:00 | 2022-09-07 17:00 | 105 | 0d | must start on 2022-09-07 13:00 | 高级编码 | 4h | 500 |
| 105 | 1.8.6.3 | 完善<单元测试计划>（编码期间完善） | 1d | 2022-09-06 13:00 | 2022-09-07 12:00 | 104 | 0d | must start on 2022-09-06 13:00 | 高级编码 | 8h | 1,000 |
| 104 | 1.8.6.4 | 完善<产品集成计划>（编码期间完善） | 1d | 2022-09-05 13:00 | 2022-09-06 12:00 | 102 | 0d | must start on 2022-09-05 13:00 | 高级编码 | 8h | 1,000 |
| 103 | 1.8.7 | **代码审查（编码期间完善，日期为截止日期）** | 3.5d | 2022-09-05 13:00 | 2022-09-08 17:00 |  | 0d |  |  | 28h | 3,500 |
| 102 | 1.8.7.1 | 选手管理&系统配置管理 | 2.5d | 2022-08-16 10:30 | 2022-08-18 15:30 | 101 | 0d | must start on 2022-08-16 10:30 | 高级编码; 编码 | 40h | 5,000 |
| 101 | 1.8.7.2 | 排班统计 | 4.97d | 2022-08-09 10:00 | 2022-08-16 09:45 | 100 | 0d | must start on 2022-08-09 10:00 | 高级编码; 编码 | 79.5h | 9,937.5 |
| 100 | 1.8.7.3 | 消息通知&公告管理 | 2.62d | 2022-08-04 13:45 | 2022-08-09 09:45 | 99 | 0d | must start on 2022-08-04 13:45 | 编码; 高级编码 | 42h | 5,250 |
| 99 | 1.8.7.4 | 赛事管理&排班管理 | 5d | 2022-07-28 13:00 | 2022-08-04 12:00 | 98 | 0d | must start on 2022-07-28 13:00 | 编码 | 40h | 5,000 |
| 98 | 1.8.7.5 | 账号管理&裁判管理 | 5d | 2022-07-21 13:00 | 2022-07-28 12:00 | 97 | 0d | must start on 2022-07-21 13:00 | 高级编码; 编码 | 80h | 10,000 |
| 97 | 1.8.7.6 | 认证登录&个人中心 | 5d | 2022-07-14 13:00 | 2022-07-21 12:00 | 78 | 0d | must start on 2022-07-14 13:00 | 高级编码; 架构师 | 80h | 10,000 |
| 96 | 1.8.8 | 编码 | 25.31d | 2022-07-14 13:00 | 2022-08-18 15:30 |  | 0d |  |  | 361.5h | 45,187.5 |
| 95 | 1.9 | **系统编码实现** | 55.84d | 2022-07-14 13:00 | 2022-09-30 10:45 |  | 0d |  |  | 565.25h | 70,656.25 |
| 94 | 1.9.1 | **项目经理对项目计划进行阶段性调整，完善《需求跟踪矩阵》** | 0.25d | 2022-07-22 10:00 | 2022-07-22 12:00 | 93 | 0d | must start on 2022-07-22 10:00 | 项目经理 | 2h | 250 |
| 93 | 1.9.1.1 | 召开设计里程碑评审会议,填写《设计里程碑状态报告》 | 0.25d | 2022-07-22 08:00 | 2022-07-22 10:00 | 91 | 0d | must start on 2022-07-22 08:00 | 高级编码; 项目经理; 配置管理; 质量保证; 设计; 需求; 测试 | 14h | 1,750 |
| 92 | 1.9.2 | **设计里程碑** | 0.5d | 2022-07-22 08:00 | 2022-07-22 12:00 |  | 0d |  |  | 16h | 2,000 |
| 91 | 1.9.2.1 | 填写设计基线《发布报告》 | 0.5d | 2022-07-21 13:00 | 2022-07-21 17:00 | 90 | 0d | must start on 2022-07-21 13:00 | 配置管理 | 4h | 500 |
| 90 | 1.9.2.2 | 配置管理在配置库中建立设计基线 | 0.5d | 2022-07-21 08:00 | 2022-07-21 12:00 | 89 | 0d | must start on 2022-07-21 08:00 | 配置管理 | 4h | 500 |
| 89 | 1.9.2.3 | QA和CM对配置库进行功能审计 | 0.5d | 2022-07-20 13:00 | 2022-07-20 17:00 | 88 | 0d | must start on 2022-07-20 13:00 | 质量保证; 配置管理 | 8h | 1,000 |
| 88 | 1.9.2.4 | 设计基线建立申请,填写《基线建立申请》 | 0.5d | 2022-07-20 08:00 | 2022-07-20 12:00 | 75 | 0d | must start on 2022-07-20 08:00 | 配置管理 | 4h | 500 |
| 87 | 1.9.3 | 建立设计基线 | 2d | 2022-07-20 08:00 | 2022-07-21 17:00 |  | 0d |  |  | 20h | 2,500 |
| 86 | 1.9.4 | 编写<产品集成计划> | 1d | 2022-07-26 13:00 | 2022-07-27 12:00 | 85 | 0d | must start on 2022-07-26 13:00 | 项目经理; 设计 | 16h | 2,000 |
| 85 | 1.9.5 | 编写<接口定义书> | 1d | 2022-07-25 13:00 | 2022-07-26 12:00 | 84 | 0d | must start on 2022-07-25 13:00 | 项目经理; 设计 | 16h | 2,000 |
| 84 | 1.9.6 | 编写<接口列表> | 0.5d | 2022-07-23 08:00 | 2022-07-25 12:00 | 83 | 0d | must start on 2022-07-23 08:00 | 设计 | 4h | 500 |
| 83 | 1.9.7 | 编写<用户操作手册>初稿 | 2d | 2022-07-21 08:00 | 2022-07-22 17:00 | 82 | 0d | must start on 2022-07-21 08:00 | 设计 | 16h | 2,000 |

| ID | WBS | Task | Duration | Start | Finish | Predecessors | Total slack | Constraint | Resources | Work | Cost |
| --- | --- | --- | --- | --- | --- | --- | --- | --- | --- | --- | --- |
| 82 | 1.9.8 | **编写<交付件一览表>初稿** | 1d | 2022-07-20 08:00 | 2022-07-20 17:00 |  | 0d | must start on 2022-07-20 08:00 | 设计 | 8h | 1,000 |
| 81 | 1.9.8.1 | 依据《详细设计说明书》《单元测试计划》编制《单元测试用例》 | 1d | 2022-07-02 13:00 | 2022-07-04 17:00 |  | 0d | must start on 2022-07-02 13:00 | 编码; 设计 | 16h | 2,000 |
| 80 | 1.9.8.2 | 依据《详细设计说明书》编制《单元测试计划》 | 1d | 2022-07-16 08:00 | 2022-07-18 17:00 |  | 0d | must start on 2022-07-16 08:00 | 设计; 编码 | 16h | 2,000 |
| 79 | 1.9.8.3 | 完善《需求跟踪矩阵》 | 1d | 2022-07-05 13:00 | 2022-07-06 12:00 |  | 0d | must start on 2022-07-05 13:00 | 设计 | 8h | 1,000 |
| 78 | 1.9.8.4 | QA检查<详细设计>记录不符合项并修正 | 1d | 2022-07-13 13:00 | 2022-07-14 12:00 | 77 | 0d | must start on 2022-07-13 13:00 | 设计; 编码 | 16h | 2,000 |
| 77 | 1.9.8.5 | 评审<详细设计>,记录缺陷并修正 | 1d | 2022-07-12 13:00 | 2022-07-13 12:00 | 76 | 0d | must start on 2022-07-12 13:00 | 项目经理; 设计; 需求; 架构师; 编码 | 40h | 5,000 |
| 76 | 1.9.8.6 | 依据《概要设计说明书》编写《详细设计说明书》 | 5d | 2022-07-05 13:00 | 2022-07-12 12:00 |  | 0d | must start on 2022-07-05 13:00 | 架构师 | 40h | 5,000 |
| 75 | 1.9.9 | **系统详细设计** | 11d | 2022-07-02 13:00 | 2022-07-18 17:00 | 73 | 0d |  |  | 136h | 17,000 |
| 74 | 1.9.9.1 | 数据库初步设计 | 1d | 2022-06-24 13:00 | 2022-06-27 12:00 |  | 0d | must start on 2022-06-24 13:00 | 架构师 | 8h | 1,000 |
| 73 | 1.9.9.2 | 评审<概要设计>,记录缺陷并修正 | 1d | 2022-07-04 08:00 | 2022-07-04 17:00 | 72 | 0d | must start on 2022-07-04 08:00 | 项目经理; 需求; 设计; 架构师 | 32h | 4,000 |
| 72 | 1.9.9.3 | 进行总体设计,编写《概要设计书》 | 5d | 2022-06-25 13:00 | 2022-07-01 17:00 | 70 | 0d | must start on 2022-06-25 13:00 | 架构师 | 40h | 5,000 |
| 71 | 1.9.10 | **系统概要设计** | 6.5d | 2022-06-24 13:00 | 2022-07-04 17:00 | 68 | 0d |  |  | 80h | 10,000 |
| 70 | 1.9.10.1 | 技术解决方案制定，购买复用分析 | 1d | 2022-06-23 13:00 | 2022-06-24 12:00 | 69 | 0d | must start on 2022-06-23 13:00 | 架构师 | 8h | 1,000 |
| 69 | 1.9.10.2 | 完善技术方案,必要情况进行决策分析形成《决策分析报告》 | 1d | 2022-06-18 13:00 | 2022-06-20 17:00 |  | 0d | must start on 2022-06-18 13:00 | 高级编码; 设计; 项目经理; 需求 | 32h | 4,000 |
| 68 | 1.9.11 | 决策分析 | 4.5d | 2022-06-18 13:00 | 2022-06-24 12:00 |  | 0d |  |  | 40h | 5,000 |
| 67 | 1.10 | **系统设计** | 27.5d | 2022-06-18 13:00 | 2022-07-27 12:00 | 41 | 0d |  |  | 352h | 44,000 |
| 66 | 1.10.1 | **项目经理对项目计划进行阶段性调整，完善《需求跟踪矩阵》** | 0.25d | 2022-06-23 10:00 | 2022-06-23 12:00 | 65 | 0d | must start on 2022-06-23 10:00 | 项目经理 | 2h | 250 |
| 65 | 1.10.1.1 | 需求里程碑会议,填写《需求里程碑状态报告》 | 0.25d | 2022-06-23 08:00 | 2022-06-23 10:00 | 63 | 0d | must start on 2022-06-23 08:00 | 项目经理; 需求; 测试; 配置管理 | 8h | 1,000 |
| 64 | 1.10.2 | **需求里程碑** | 0.5d | 2022-06-23 08:00 | 2022-06-23 12:00 | 59 | 0d |  |  | 10h | 1,250 |
| 63 | 1.10.2.1 | 填写需求基线《发布报告》 | 0.5d | 2022-06-22 13:00 | 2022-06-22 17:00 | 62 | 0d | must start on 2022-06-22 13:00 | 配置管理 | 4h | 500 |
| 62 | 1.10.2.2 | 配置管理在配置库中建立需求基线 | 0.5d | 2022-06-22 08:00 | 2022-06-22 12:00 | 61 | 0d | must start on 2022-06-22 08:00 | 配置管理 | 4h | 500 |
| 61 | 1.10.2.3 | QA和CM对配置库进行功能和物理审计 | 0.5d | 2022-06-20 13:00 | 2022-06-20 17:00 | 60 | 0d | must start on 2022-06-20 13:00 | 质量保证; 配置管理 | 8h | 1,000 |
| 60 | 1.10.2.4 | 需求基线建立申请,填写《基线建立申请》 | 0.5d | 2022-06-19 08:00 | 2022-06-20 12:00 |  | 0d | must start on 2022-06-19 08:00 | 配置管理 | 4h | 500 |
| 59 | 1.10.3 | **建立需求基线** | 3d | 2022-06-19 08:00 | 2022-06-22 17:00 | 58 | 0d |  |  | 20h | 2,500 |
| 58 | 1.10.3.1 | 评审<系统测试用例>记录并修改缺陷 | 1d | 2022-06-16 08:15 | 2022-06-17 08:15 | 57 | 0d | must start on 2022-06-16 08:15 | 高级编码; 项目经理; 需求; 设计; 测试; 配置管理 | 48h | 6,000 |
| 57 | 1.10.3.2 | QA检查《产品需求说明书》和《系统测试用例》 | 1d | 2022-06-15 08:00 | 2022-06-15 17:00 | 56 | 0d | must start on 2022-06-15 08:00 | 质量保证; 需求; 测试 | 24h | 3,000 |
| 56 | 1.10.3.3 | 依据《产品需求说明书》编写《系统测试用例》 | 2d | 2022-06-09 08:00 | 2022-06-10 17:00 |  | 0d | must start on 2022-06-09 08:00 | 需求; 测试; 项目经理 | 48h | 6,000 |
| 55 | 1.10.3.4 | 完善<项目进度计划>，完善<项目计划书> | 1d | 2022-06-09 13:45 | 2022-06-10 13:45 | 54 | 0d | must start on 2022-06-09 13:45 | 项目经理 | 8h | 1,000 |
| 54 | 1.10.3.5 | 评审《测试计划》并发布 | 1d | 2022-06-08 13:45 | 2022-06-09 13:45 | 53 | 0d | must start on 2022-06-08 13:45 | 测试; 项目经理 | 16h | 2,000 |
| 53 | 1.10.3.6 | 完善编写《测试计划》 | 2d | 2022-06-06 13:45 | 2022-06-08 13:45 | 52 | 0d | must start on 2022-06-06 13:45 | 测试 | 16h | 2,000 |
| 52 | 1.10.3.7 | 完善<项目估算>和《需求跟踪矩阵》 | 1d | 2022-06-03 13:45 | 2022-06-06 13:45 | 51 | 0d | must start on 2022-06-03 13:45 | 高级编码; 设计; 项目经理 | 24h | 3,000 |
| 51 | 1.10.3.8 | 评审<产品需求说明书>,记录并修改缺陷 | 0.5d | 2022-06-02 16:45 | 2022-06-03 11:45 | 50 | 0d | must start on 2022-06-02 16:45 | 高级编码; 项目经理; 需求; 设计; 测试; 配置管理 | 24h | 3,000 |
| 50 | 1.10.3.9 | 编写《产品需求说明书》 | 6d | 2022-05-25 16:45 | 2022-06-02 16:45 | 49 | 0d | must start on 2022-05-25 16:45 | 需求 | 48h | 6,000 |
| 49 | 1.10.3.10 | <用户需求说明书>提交客户确认 | 0.5d | 2022-05-25 11:45 | 2022-05-25 16:45 | 48 | 0d | must start on 2022-05-25 11:45 | 项目经理; 需求 | 8h | 1,000 |
| 48 | 1.10.3.11 | QA检查<用户需求说明书>并记录不符合项并修改 | 0.5d | 2022-05-24 16:45 | 2022-05-25 11:45 | 47 | 0d | must start on 2022-05-24 16:45 | 配置管理; 质量保证 | 8h | 1,000 |
| 47 | 1.10.3.12 | 评审<用户需求说明书>,记录并修改缺陷 | 0.5d | 2022-05-24 11:45 | 2022-05-24 16:45 | 46 | 0d | must start on 2022-05-24 11:45 | 高级编码; 项目经理; 需求; 设计; 测试; 配置管理 | 24h | 3,000 |
| 46 | 1.10.3.13 | 分析需求,编写《用户需求说明书》 | 5d | 2022-05-17 11:00 | 2022-05-24 11:00 |  | 0d | must start on 2022-05-17 11:00 | 需求 | 40h | 5,000 |

| ID | WBS | Task | Duration | Start | Finish | Predecessors | Total slack | Constraint | Resources | Work | Cost |
| --- | --- | --- | --- | --- | --- | --- | --- | --- | --- | --- | --- |
| 45 | 1.10.4 | **需求分析** | 22.66d | 2022-05-17 11:00 | 2022-06-17 08:15 | 42 | 0d |  |  | 336h | 42,000 |
| 44 | 1.10.4.1 | 编写《需求跟踪矩阵》填写原始需求 | 0.5d | 2022-05-17 09:00 | 2022-05-17 14:00 | 43 | 0d | must start on 2022-05-17 09:00 | 需求 | 4h | 500 |
| 43 | 1.10.4.2 | 按照《需求调研计划》进行调研，形成调研记录 | 2d | 2022-05-13 09:00 | 2022-05-17 09:00 | 38 | 0d | must start on 2022-05-13 09:00 | 需求 | 16h | 2,000 |
| 42 | 1.10.5 | 需求调研 | 2.5d | 2022-05-13 09:00 | 2022-05-17 14:00 |  | 0d |  |  | 20h | 2,500 |
| 41 | 1.11 | **需求开发** | 29.38d | 2022-05-13 09:00 | 2022-06-23 12:00 |  | 0d |  |  | 386h | 48,250 |
| 40 | 1.11.1 | **项目经理根据里程碑数据进行阶段性调整** | 0.25d | 2022-05-12 16:00 | 2022-05-13 09:00 | 39 | 0d | must start on 2022-05-12 16:00 | 项目经理 | 2h | 250 |
| 39 | 1.11.1.1 | 开策划里程碑会议,填写《策划里程碑状态报告》 | 0.25d | 2022-05-12 11:30 | 2022-05-12 14:30 | 30 | 0d | must start on 2022-05-12 11:30 | 高级编码; 项目经理; 需求; 设计; 测试; 配置管理 | 12h | 1,500 |
| 38 | 1.11.2 | **项目计划里程碑** | 0.69d | 2022-05-12 11:30 | 2022-05-13 09:00 |  | 0d |  |  | 14h | 1,750 |
| 37 | 1.11.2.1 | 编写培训反馈记录 | 1d | 2022-05-06 13:00 | 2022-05-09 12:00 | 36 | 0d | must start on 2022-05-06 13:00 | 培训 | 8h | 1,000 |
| 36 | 1.11.2.2 | 依据《项目培训计划》组织培训 | 0.5d | 2022-05-06 08:00 | 2022-05-06 12:00 | 25 | 0d | must start on 2022-05-06 08:00 | 培训 | 4h | 500 |
| 35 | 1.11.3 | **召开项目培训** | 1.5d | 2022-05-06 08:00 | 2022-05-09 12:00 |  | 0d |  |  | 12h | 1,500 |
| 34 | 1.11.3.1 | 填写计划基线《发布报告》 | 0.5d | 2022-05-11 16:30 | 2022-05-12 11:30 | 33 | 0d | must start on 2022-05-11 16:30 | 配置管理 | 4h | 500 |
| 33 | 1.11.3.2 | 配置管理在配置库中建立计划基线 | 0.5d | 2022-05-11 11:30 | 2022-05-11 16:30 | 32 | 0d | must start on 2022-05-11 11:30 | 配置管理 | 4h | 500 |
| 32 | 1.11.3.3 | QA和CM对配置库进行功能审计和物理审计 | 0.5d | 2022-05-10 16:30 | 2022-05-11 11:30 | 31 | 0d | must start on 2022-05-10 16:30 | 质量保证; 配置管理 | 8h | 1,000 |
| 31 | 1.11.3.4 | 计划基线建立申请,填写《基线建立申请》 | 0.5d | 2022-05-10 11:00 | 2022-05-10 16:00 | 29 | 0d | must start on 2022-05-10 11:00 | 配置管理 | 4h | 500 |
| 30 | 1.11.4 | **建立计划基线** | 2.06d | 2022-05-10 11:00 | 2022-05-12 11:30 | 20 | 0d |  |  | 20h | 2,500 |
| 29 | 1.11.4.1 | 调研计划发给客户 | 1d | 2022-05-09 11:00 | 2022-05-10 11:00 | 28 | 0d | must start on 2022-05-09 11:00 | 项目经理 | 8h | 1,000 |
| 28 | 1.11.4.2 | 项目计划书的评审与发布 | 1d | 2022-05-06 11:00 | 2022-05-09 11:00 | 27 | 0d | must start on 2022-05-06 11:00 | 项目经理 | 8h | 1,000 |
| 27 | 1.11.4.3 | 评审中发现的缺陷进行修正 | 1d | 2022-05-05 10:15 | 2022-05-06 10:15 | 26 | 0d | must start on 2022-05-05 10:15 | 高级编码; 需求; 设计; 测试; 配置管理; EPG; 项目经理 | 56h | 7,000 |
| 26 | 1.11.4.4 | **项目计划书,从属计划及项目定义过程进行评审** | 1d | 2022-05-04 09:00 | 2022-05-05 09:00 | 16 | 0d | must start on 2022-05-04 09:00 | 高级编码; 项目经理; 需求; 设计; 配置管理; 测试 | 48h | 6,000 |
| 25 | 1.11.4.4.1 | 编写<培训计划> | 1d | 2022-05-05 08:00 | 2022-05-05 17:00 |  | 0d | must start on 2022-05-05 08:00 | 培训 | 8h | 1,000 |
| 24 | 1.11.4.4.2 | 编写测试计划 | 1d | 2022-05-05 08:00 | 2022-05-05 17:00 |  | 0d | must start on 2022-05-05 08:00 | 高级测试 | 8h | 1,000 |
| 23 | 1.11.4.4.3 | 完善配置管理计划(CM) | 1d | 2022-05-05 08:00 | 2022-05-05 17:00 |  | 0d | must start on 2022-05-05 08:00 | 配置管理 | 8h | 1,000 |
| 22 | 1.11.4.4.4 | 完善质量保证计划(QA) | 1d | 2022-05-05 08:00 | 2022-05-05 17:00 |  | 0d | must start on 2022-05-05 08:00 | 质量保证主管 | 8h | 1,000 |
| 21 | 1.11.4.4.5 | 编写需求调研计划 | 1d | 2022-05-05 08:00 | 2022-05-05 17:00 |  | 0d | must start on 2022-05-05 08:00 | 需求 | 8h | 1,000 |

| ID | WBS | Task | Duration | Start | Finish | Predecessors | Total slack | Constraint | Resources | Work | Cost |
| --- | --- | --- | --- | --- | --- | --- | --- | --- | --- | --- | --- |
| 20 | 1.11.4.5 | **制定从属计划** | 1d | 2022-05-05 08:00 | 2022-05-05 17:00 |  | 0d |  |  | 40h | 5,000 |
| 19 | 1.11.4.5.1 | 编写<度量计划> | 0.94d | 2022-05-03 09:30 | 2022-05-04 09:00 | 18 | 0d | must start on 2022-05-03 09:30 | 项目经理 | 7.5h | 937.5 |
| 18 | 1.11.4.5.2 | 编写《项目计划书》 | 4.16d | 2022-04-27 08:00 | 2022-05-03 09:15 | 17 | 0d | must start on 2022-04-27 08:00 | 项目经理 | 33.25h | 4,156.25 |
| 17 | 1.11.4.5.3 | 完善项目进度计划 | 1d | 2022-04-26 08:00 | 2022-04-26 17:00 | 14 | 0d | must start on 2022-04-26 08:00 | 项目经理 | 8h | 1,000 |
| 16 | 1.11.4.6 | 项目经理制定项目计划 | 6.12d | 2022-04-26 08:00 | 2022-05-04 09:00 |  | 0d |  |  | 48.75h | 6,093.75 |
| 15 | 1.11.5 | **项目计划** | 10.38d | 2022-04-26 08:00 | 2022-05-10 11:00 |  | 0d |  |  | 208.75h | 26,093.75 |
| 14 | 1.11.5.1 | 依据<风险检查表>进行风险识别,初步形成计划 | 0.5d | 2022-04-25 09:15 | 2022-04-25 14:15 | 13 | 0d | must start on 2022-04-25 09:15 | 项目经理 | 4h | 500 |
| 13 | 1.11.5.2 | 估算项目的规模,工作量,成本,形成进度计划<项目估算>和项目预算 | 1d | 2022-04-22 08:30 | 2022-04-25 08:30 | 12 | 0d | must start on 2022-04-22 08:30 | 高级编码; 设计; 项目经理 | 24h | 3,000 |
| 12 | 1.11.5.3 | 根据初步，进行WBS分解 | 1d | 2022-04-21 08:15 | 2022-04-22 08:15 | 11 | 0d | must start on 2022-04-21 08:15 | 高级编码; 设计; 项目经理 | 24h | 3,000 |
| 11 | 1.11.5.4 | EPG指导项目经理编写《项目定义过程》 | 0.5d | 2022-04-20 11:15 | 2022-04-20 16:15 | 10 | 0d | must start on 2022-04-20 11:15 | 项目经理; EPG | 8h | 1,000 |
| 10 | 1.11.5.5 | 确定软件生存周期,初步制定QA,CM计划 | 1.67d | 2022-04-18 14:30 | 2022-04-20 10:50 | 7 | 0d | must start on 2022-04-18 14:30 | 项目经理; 配置管理; 质量保证 | 40h | 5,000 |
| 9 | 1.11.6 | 项目估算 | 4.97d | 2022-04-18 14:30 | 2022-04-25 14:15 |  | 0d |  |  | 100h | 12,500 |
| 8 | 1.12 | **项目计划** | 18.44d | 2022-04-18 14:30 | 2022-05-13 09:00 |  | 0d |  |  | 354.75h | 44,343.75 |
| 7 | 1.12.1 | 编写《项目立项报告》 | 0.5d | 2022-04-18 09:30 | 2022-04-18 14:30 |  | 0d | must start on 2022-04-18 09:30 | 项目经理 | 4h | 500 |
| 6 | 1.12.2 | 召开项目立项会议 | 0.28d | 2022-04-26 16:00 | 2022-04-27 09:15 | 5 | 0d | must start on 2022-04-26 16:00 | 高级编码; 设计; 需求; 测试; 配置管理; 项目经理 | 13.5h | 1,687.5 |
| 5 | 1.12.3 | 项目组织架构，章程制定、资源、职责，干系人RACI整理 | 0.25d | 2022-04-26 13:30 | 2022-04-26 15:30 | 4 | 0d | must start on 2022-04-26 13:30 | 项目经理 | 2h | 250 |
| 4 | 1.12.4 | 项目初步估算 | 0.25d | 2022-04-26 10:00 | 2022-04-26 12:00 | 3 | 0d | must start on 2022-04-26 10:00 | 高级编码; 高级测试; 高级设计; 项目经理 | 8h | 1,000 |
| 3 | 1.12.5 | 了解项目情况,获得初步需求 | 3d | 2022-04-08 08:00 | 2022-04-12 17:00 |  | 0d | must start on 2022-04-08 08:00 | 高级设计; 项目经理; 测试; 高级编码 | 96h | 12,000 |
| 2 | 1.13 | 项目立项 | 13.16d | 2022-04-08 08:00 | 2022-04-27 09:15 |  | 0d |  |  | 123.5h | 15,437.5 |
| 1 | 2 | 赛事运营支持系统 | 311.5d | 2022-04-08 08:00 | 2023-06-19 12:00 |  | 0d |  |  | 2333.5h | 291,687.5 |

Notes:
- 6: 产出<会议记录>
- 5: 产出<项目章程>
